# Alfonso

Schedule from MS Project, 2021-11-15 to 2022-01-31, costs in €.

## Calendars

- Estándar: Mon-Fri 09:00-13:00, 15:00-19:00; Sat-Sun off. Exceptions (off unless hours are given): 2021-12-06 (Dia de la constitucion española), 2021-12-08 (Inmaculada concepcion), 2021-12-25 (Navidad), 2022-01-01 (Año nuevo), 2022-01-06 (Epifania del señor).
- Calendario de Huelva: Mon-Fri 09:00-13:00, 15:00-19:00; Sat-Sun off.

## Resources

| Resource | Rate |
| --- | --- |
| Juan Pérez | 29.15 |
| Javier Gutiérrez | 29.15 |
| Sara Carbonero | 29.15 |
| Vicente Ruiz | 29.15 |
| Francisco Delgado | 22.83 |
| Serafín Feria | 22.83 |
| Obrero de la Empresa Proveedora de Soportes 1 | 35 |
| Obrero de la Empresa Proveedora de Soportes 2 | 35 |
| Dispositivo Lector Código de Barras | 36 |
| Tornos de Acceso | 1580 |
| Dispositivos Biométricos Faciales | 1240 |
| Ordenador Servidor | 3600 |
| Windows 2019 Server | 850 |
| Switch 48 puertos 10/100/1000 mhz gestionable | 1250 |
| Patch Panel 48 puertos | 220 |
| Armario de 24 unidades | 850 |
| Soporte | 11.5 |
| Líneas de Producción |  |
| Puestos de trabajo |  |
| Catering | 250 |

## Schedule

| ID | WBS | Task | Duration | Start | Finish | Predecessors | Total slack | Free slack | Constraint | Calendar | Resources | Work | Cost |
| --- | --- | --- | --- | --- | --- | --- | --- | --- | --- | --- | --- | --- | --- |
| 1 | 1 | **Proyecto ETSISOFT** | 52.12d | 2021-11-15 | 2022-01-31 |  | 0d |  |  | Estándar |  | 1032h | 74,051.9 |
| 2 | 1.1 | **Instalación de elementos de control en puestos de líneas de produccion** | 21.61d | 2021-11-15 | 2021-12-16 |  | 27.77d | 0d |  | Estándar |  | 180h | 20,486.91 |
| 3 | 1.1.1 | Montaje de los soportes | 60h | 2021-11-15 | 2021-11-24 |  | 27.77d | 0d |  | Estándar | Soporte [24000%]; Obrero de la Empresa Proveedora de Soportes 1; Obrero de la Empresa Proveedora de Soportes 2 | 120h | 6,960 |
| 4 | 1.1.2 | **Habilitar punto de corriente** | 7d | 2021-11-25 | 2021-12-07 |  | 31.77d | 4d |  | Estándar |  |  | 1,250 |
| 5 | 1.1.2.1 | Instalar cables | 4d | 2021-11-25 | 2021-12-01 | 3FS+1d | 31.77d | 0d |  | Estándar |  |  | 700 |
| 6 | 1.1.2.2 | Instalar puntos de corriente | 2d | 2021-12-01 | 2021-12-03 | 5 | 31.77d | 0d |  | Estándar |  |  | 350 |
| 7 | 1.1.2.3 | Pruebas | 1d | 2021-12-03 | 2021-12-07 | 5, 6 | 31.77d |  |  | Estándar |  |  | 200 |
| 8 | 1.1.3 | **Instalacion de red** | 11d | 2021-11-25 | 2021-12-14 |  | 27.77d | 0d |  | Estándar |  |  | 1,920 |
| 9 | 1.1.3.1 | Instalar canaletas | 2d | 2021-11-25 | 2021-11-29 | 3FS+1d | 27.77d | 0d |  | Estándar |  |  | 220 |
| 10 | 1.1.3.2 | Instalar cables | 4d | 2021-11-29 | 2021-12-03 | 9 | 27.77d | 0d |  | Estándar |  |  | 650 |
| 11 | 1.1.3.3 | Instalar tomas de red en puestos | 2d | 2021-12-03 | 2021-12-09 | 10 | 27.77d | 0d |  | Estándar |  |  | 400 |
| 12 | 1.1.3.4 | Montaje del armario de comunicaciones, pruebas y certificados de la red | 3d | 2021-12-09 | 2021-12-14 | 11 | 27.77d |  |  | Estándar |  |  | 650 |
| 13 | 1.1.4 | Montaje de los lectores | 15.75h | 2021-12-14 | 2021-12-16 | 4, 8 | 27.77d |  | start no earlier than 2021-12-10 | Estándar | Dispositivo Lector Código de Barras [24000%]; Sara Carbonero; Vicente Ruiz; Juan Pérez; Francisco Delgado | 60h | 10,356.91 |
| 14 | 1.2 | **Instalación de tornos de acceso** | 8.39d | 2021-12-16 | 2021-12-28 |  | 22.12d |  |  | Estándar |  | 32h | 14,150.7 |
| 15 | 1.2.1 | Montaje de los tornos | 1d | 2021-12-16 | 2021-12-17 | 2 | 27.77d | 0d |  | Estándar | Tornos de Acceso [300%]; Obrero de la Empresa Proveedora de Soportes 2; Obrero de la Empresa Proveedora de Soportes 1 | 16h | 5,300 |
| 16 | 1.2.2 | Instalacion de las barreras | 0.5d | 2021-12-17 | 2021-12-20 | 15 | 29.02d |  |  | Estándar | Obrero de la Empresa Proveedora de Soportes 2; Obrero de la Empresa Proveedora de Soportes 1 | 8h | 1,130 |
| 17 | 1.2.3 | Integracion de los dispositivos faciales | 1d | 2021-12-27 | 2021-12-28 | 15 | 22.12d |  | start no earlier than 2021-12-27 | Estándar | Dispositivos Biométricos Faciales [600%]; Javier Gutiérrez | 8h | 7,720.7 |
| 18 | 1.3 | **Instalacion de la infraestructura comun de red y equipamiento informatico** | 2d | 2021-11-15 | 2021-11-16 |  | 48.38d | 47.29d |  | Estándar |  |  | 14,270 |
| 19 | 1.3.1 | Montaje e instalación del servidor | 2d | 2021-11-15 | 2021-11-16 |  | 48.38d | 47.29d |  | Estándar | Switch 48 puertos 10/100/1000 mhz gestionable [600%]; Armario de 24 unidades; Patch Panel 48 puertos [600%]; Windows 2019 Server; Ordenador Servidor |  | 14,270 |
| 20 | 1.4 | **Desarrollo de la aplicación informatica** | 50.12d | 2021-11-15 | 2022-01-27 |  | 0d |  |  | Estándar |  | 694h | 20,237.35 |
| 21 | 1.4.1 | **Analisis** | 15.38d | 2021-11-15 | 2021-12-07 |  | 6.91d | 8.18d |  | Estándar |  | 318h | 9,409.69 |
| 22 | 1.4.1.1 | Definición del sistema | 31.33h | 2021-11-15 | 2021-11-19 |  | 6.91d | 0d |  | Estándar | Juan Pérez; Sara Carbonero; Vicente Ruiz | 94h | 2,740.1 |
| 23 | 1.4.1.2 | Establecimiento de los requisitos | 42h | 2021-11-19 | 2021-11-26 | 22 | 8.74d | 1.83d |  | Estándar | Juan Pérez | 42h | 1,224.3 |
| 24 | 1.4.1.3 | Análisis de casos de uso | 38h | 2021-11-19 | 2021-11-25 | 22 | 9.24d | 2.33d |  | Estándar | Sara Carbonero | 38h | 1,107.7 |
| 25 | 1.4.1.4 | Análisis de clases | 52h | 2021-11-19 | 2021-11-30 | 22 | 6.91d | 0d |  | Estándar | Vicente Ruiz | 52h | 1,515.8 |
| 26 | 1.4.1.5 | Identificación de las interfaces de usuario | 28h | 2021-11-19 | 2021-11-24 | 22 | 10.49d | 3.58d |  | Estándar | Javier Gutiérrez | 28h | 816.2 |
| 27 | 1.4.1.6 | Análisis de consistencia | 14.67h | 2021-11-30 | 2021-12-02 | 23, 24, 25, 26 | 6.91d | 0d | start no earlier than 2021-11-29 | Estándar | Sara Carbonero; Juan Pérez; Vicente Ruiz | 36h | 1,087.3 |

Notes:
- 13: Se puede hacer dos dias despues de la tarea 4 y dos dias después de la tarea 8 para acortar tiempo. / ¿Qué sueldo le ponemos a Javier Gutierrez?

| ID | WBS | Task | Type | Duration | Start | Finish | Predecessors | Total slack | Free slack | Constraint | Calendar | Resources | Work | Cost |
| --- | --- | --- | --- | --- | --- | --- | --- | --- | --- | --- | --- | --- | --- | --- |
| 28 | 1.4.1.7 | **Aprobación del análisis** |  | 2.54d | 2021-12-02 | 2021-12-07 | 27 | 6.91d | 0d |  | Estándar |  | 28h | 918.29 |
| 29 | 1.4.1.7.1 | A |  | 14h | 2021-12-02 | 2021-12-07 |  | 7.91d | 9.18d |  |  | Vicente Ruiz | 14h | 469.31 |
| 30 | 1.4.1.7.2 | S |  | 14h | 2021-12-02 | 2021-12-03 |  | 9.7d | 10.97d |  |  | Sara Carbonero | 14h | 448.98 |
| 31 | 1.4.2 | **Diseño** |  | 13.97d | 2021-12-07 | 2021-12-28 |  | 6.91d | 8.18d |  | Estándar |  | 176h | 5,061.82 |
| 32 | 1.4.2.1 | Definición de la arquitectura |  | 32h | 2021-12-07 | 2021-12-16 | 28 | 6.91d | 0d |  | Estándar | Juan Pérez | 32h | 932.8 |
| 33 | 1.4.2.2 | **Diseño de clases** |  | 5.61d | 2021-12-16 | 2021-12-24 | 32 | 6.91d | 0.27d |  | Estándar |  | 48h | 1,497.29 |
| 34 | 1.4.2.2.1 | A |  | 32h | 2021-12-16 | 2021-12-24 |  | 6.91d | 8.18d | start no earlier than 2021-12-14 |  | Sara Carbonero | 32h | 950.87 |
| 35 | 1.4.2.2.2 | P |  | 16h | 2021-12-16 | 2021-12-22 |  | 8.91d | 10.18d |  |  | Vicente Ruiz | 16h | 546.42 |
| 36 | 1.4.2.3 | **Diseño de los datos** |  | 5.56d | 2021-12-16 | 2021-12-24 | 32 | 6.95d | 0d |  | Estándar |  | 64h | 1,696.17 |
| 37 | 1.4.2.3.1 | A |  | 32h | 2021-12-20 | 2021-12-23 |  | 7.25d | 7.92d | start no earlier than 2021-12-14 |  | Juan Pérez | 32h | 951.46 |
| 38 | 1.4.2.3.2 | P |  | 32h | 2021-12-16 | 2021-12-24 |  | 6.95d | 8.23d |  |  | Francisco Delgado | 32h | 744.71 |
| 39 | 1.4.2.4 | **Verificacion del diseño** |  | 2.25d | 2021-12-24 | 2021-12-28 | 33, 36 | 6.91d | 0d |  | Estándar |  | 32h | 935.56 |
| 40 | 1.4.2.4.1 | A |  | 8h | 2021-12-24 | 2021-12-27 |  | 8.16d | 8.92d |  |  | Vicente Ruiz | 8h | 273.54 |
| 41 | 1.4.2.4.2 | P |  | 8h | 2021-12-24 | 2021-12-27 |  | 8.16d | 8.92d |  |  | Francisco Delgado | 8h | 186.29 |
| 42 | 1.4.2.4.3 | S |  | 16h | 2021-12-24 | 2021-12-28 |  | 6.91d | 7.92d |  |  | Juan Pérez | 16h | 475.73 |
| 43 | 1.4.2.5 | Finalización del Diseño | milestone | 0d | 2021-12-28 | 2021-12-28 | 39 | 20.78d | 21.79d |  | Estándar |  |  |  |
| 44 | 1.4.3 | **Construccion** |  | 16.78d | 2021-12-28 | 2022-01-21 |  | 4d |  |  | Estándar |  | 136h | 3,926.49 |
| 45 | 1.4.3.1 | Codificación de las clases |  | 36h | 2021-12-28 | 2022-01-04 | 39 | 6.91d | 0d | start no earlier than 2021-12-13 | Estándar | Vicente Ruiz; Francisco Delgado | 72h | 2,069.26 |
| 46 | 1.4.3.2 | Integración del sistema |  | 14h | 2022-01-04 | 2022-01-07 | 45 | 6.91d | 0d |  | Estándar | Vicente Ruiz; Francisco Delgado | 28h | 804.71 |
| 47 | 1.4.3.3 | **Aprobación del sistema** |  | 10.28d | 2022-01-07 | 2022-01-21 | 46 | 0d |  |  | Estándar |  | 36h | 1,052.51 |
| 48 | 1.4.3.3.1 | P |  | 9h | 2022-01-07 | 2022-01-10 |  | 9.16d | 11.17d |  |  | Francisco Delgado; Vicente Ruiz | 18h | 517.32 |
| 49 | 1.4.3.3.2 | S |  | 13.33h | 2022-01-18 | 2022-01-21 |  | 0d |  |  |  | Juan Pérez; Sara Carbonero | 18h | 535.19 |
| 50 | 1.4.3.4 | Fin de la construcción | milestone | 0d | 2022-01-21 | 2022-01-21 | 47 | 4d |  |  | Estándar |  |  |  |
| 51 | 1.4.4 | **Pruebas** |  | 4d | 2022-01-21 | 2022-01-27 |  | 0d |  |  | Estándar |  | 64h | 1,839.35 |
| 52 | 1.4.4.1 | Ejecución de pruebas unitarias |  | 19h | 2022-01-21 | 2022-01-25 | 47 | 0d |  |  | Estándar | Francisco Delgado; Vicente Ruiz | 38h | 1,092.11 |
| 53 | 1.4.4.2 | Ejecución de las pruebas de integracion |  | 13h | 2022-01-25 | 2022-01-27 | 52 | 0d |  |  | Estándar | Francisco Delgado; Vicente Ruiz | 26h | 747.23 |

| ID | WBS | Task | Duration | Start | Finish | Predecessors | Total slack | Constraint | Calendar | Resources | Work | Cost |
| --- | --- | --- | --- | --- | --- | --- | --- | --- | --- | --- | --- | --- |
| 54 | 1.5 | **Instalación del software y pruebas del sistema** | 1.75d | 2022-01-27 | 2022-01-31 |  | 0d |  | Estándar |  | 56h | 1,637.24 |
| 55 | 1.5.1 | Instalación y configuración aplicación ETSISOFT | 6.5h | 2022-01-27 | 2022-01-28 | 18, 20 | 0d |  | Estándar | Juan Pérez; Sara Carbonero; Francisco Delgado; Vicente Ruiz | 26h | 760.15 |
| 56 | 1.5.2 | Prueba global del sistema | 7.5h | 2022-01-28 | 2022-01-31 | 55 | 0d |  | Estándar | Vicente Ruiz; Juan Pérez; Francisco Delgado; Sara Carbonero | 30h | 877.09 |
| 57 | 1.6 | **Reunión de coordinación** | 40.25d | 2021-11-15 | 2022-01-10 |  | 14.88d |  |  |  | 70h | 3,269.7 |
| 58 | 1.6.1 | Reunión de coordinación 1 | 2h | 2021-11-15 | 2021-11-15 |  | 51.88d | start no earlier than 2021-11-15 | Estándar | Catering; Javier Gutiérrez [300%]; Francisco Delgado; Juan Pérez; Sara Carbonero; Vicente Ruiz | 14h | 645.46 |
| 59 | 1.6.2 | Reunión de coordinación 2 | 2h | 2021-11-29 | 2021-11-29 |  | 41.88d | start no earlier than 2021-11-29 | Estándar | Catering; Javier Gutiérrez [300%]; Francisco Delgado; Juan Pérez; Sara Carbonero; Vicente Ruiz | 14h | 645.46 |
| 60 | 1.6.3 | Reunión de coordinación 3 | 2h | 2021-12-13 | 2021-12-13 |  | 33.88d | start no earlier than 2021-12-13 | Estándar | Catering; Javier Gutiérrez [300%]; Francisco Delgado; Juan Pérez; Sara Carbonero; Vicente Ruiz | 14h | 654.21 |
| 61 | 1.6.4 | Reunión de coordinación 4 | 2h | 2021-12-27 | 2021-12-27 |  | 23.88d | start no earlier than 2021-12-27 | Estándar | Catering; Javier Gutiérrez [300%]; Francisco Delgado; Juan Pérez; Sara Carbonero; Vicente Ruiz | 14h | 662.29 |
| 62 | 1.6.5 | Reunión de coordinación 5 | 2h | 2022-01-10 | 2022-01-10 |  | 14.88d | start no earlier than 2022-01-10 |  | Catering; Javier Gutiérrez [300%]; Juan Pérez; Francisco Delgado; Sara Carbonero; Vicente Ruiz | 14h | 662.29 |

Notes:
- 55: ¿Solo 1 persona o más de una?
